# 出门在外

Schedule from MS Project, 2019-06-13 to 2019-08-29, costs in ¥, A marks actual dates.

## Calendars

- 标准: Mon-Fri 08:00-12:00, 13:00-17:00; Sat-Sun off.

## Resources

| Resource | Rate | Cost per use |
| --- | --- | --- |
| 李佳伟 | 60 | 480 |
| 熊毅 | 50 | 400 |
| 李晔欣 | 50 | 400 |
| 王庭恩 | 50 | 400 |

## Schedule

| ID | WBS | Task | Type | Duration | Start | Finish | Predecessors | Complete | Remaining | Total slack | Constraint | Resources | Work | Actual work | Cost | Actual cost | 总成本 | 剩余 |
| --- | --- | --- | --- | --- | --- | --- | --- | --- | --- | --- | --- | --- | --- | --- | --- | --- | --- | --- |
| 1 | 1 | **启动** |  | 2.5d | 2019-06-13 A | 2019-06-17 A |  | 100% |  |  |  |  | 36h | 36h | 4,140 | 4,140 | ¥4,800.00 | ¥4,800.00 |
| 2 | 1.1 | 组建核心团队 |  | 1d | 2019-06-13 A | 2019-06-13 A |  | 100% |  |  |  | 李佳伟 [50%] | 4h | 4h | 480 | 480 | ¥1,800.00 | ¥1,800.00 |
| 3 | 1.2 | 干系人分析 |  | 1d | 2019-06-14 A | 2019-06-14 A | 2 | 100% |  |  |  | 熊毅 | 8h | 8h | 800 | 800 | ¥400.00 | ¥400.00 |
| 4 | 1.3 | 里程碑计划 | manual | 1d | 2019-06-14 A | 2019-06-14 A |  | 100% |  |  | start no earlier than 2019-06-14 | 王庭恩 | 8h | 8h | 800 | 800 | ¥400.00 | ¥400.00 |
| 5 | 1.4 | 制定项目章程 | manual | 1d | 2019-06-14 A | 2019-06-14 A |  | 100% |  |  |  | 李晔欣 | 8h | 8h | 800 | 800 | ¥400.00 | ¥400.00 |
| 6 | 1.5 | 项目启动大会 | manual | 0.5d | 2019-06-17 A | 2019-06-17 A |  | 100% |  |  |  | 李佳伟 [50%]; 李晔欣 [50%]; 王庭恩 [50%]; 熊毅 [50%] | 8h | 8h | 1,260 | 1,260 | ¥1,800.00 | ¥1,800.00 |
| 7 | 2 | **规划** |  | 32d | 2019-06-13 A | 2019-07-26 |  | 25% | 24d | 23.5d |  |  | 545.6h | 83h | 37,168 | 7,780 | ¥24,160.00 | ¥24,160.00 |
| 8 | 2.1 | **规划范围** |  | 11d | 2019-06-13 A | 2019-06-27 A |  | 100% |  |  |  |  | 80h | 80h | 7,120 | 7,120 | ¥9,600.00 | ¥9,600.00 |
| 9 | 2.1.1 | 制定需求说明书 |  | 4d | 2019-06-13 A | 2019-06-18 A |  | 100% |  |  |  | 李佳伟 [50%] | 16h | 16h | 1,200 | 1,200 | ¥3,600.00 | ¥3,600.00 |
| 10 | 2.1.2 | 界面设计 |  | 2d | 2019-06-19 A | 2019-06-20 A | 9 | 100% |  |  |  | 李晔欣 | 16h | 16h | 1,200 | 1,200 | ¥1,600.00 | ¥1,600.00 |
| 11 | 2.1.3 | 详细设计说明书 |  | 1d | 2019-06-21 A | 2019-06-21 A | 10 | 100% |  |  |  | 王庭恩 | 8h | 8h | 800 | 800 | ¥2,000.00 | ¥2,000.00 |
| 12 | 2.1.4 | 范围说明书 |  | 1d | 2019-06-24 A | 2019-06-24 A | 11 | 100% |  |  |  | 李佳伟 | 8h | 8h | 960 | 960 | ¥1,200.00 | ¥1,200.00 |
| 13 | 2.1.5 | 创建WBS |  | 2d | 2019-06-25 A | 2019-06-26 A | 12 | 100% |  |  |  | 熊毅 | 16h | 16h | 1,200 | 1,200 | ¥800.00 | ¥800.00 |
| 14 | 2.1.6 | 形成范围基准 |  | 1d | 2019-06-27 A | 2019-06-27 A | 13 | 100% |  |  |  | 李佳伟; 熊毅 | 16h | 16h | 1,760 | 1,760 | ¥400.00 | ¥400.00 |
| 15 | 2.2 | **规划时间** |  | 2d | 2019-06-28 A | 2019-07-01 |  | 42% | 1.17d | 42.5d |  |  | 8.8h | 3h | 912 | 564 | ¥2,800.00 | ¥2,800.00 |
| 16 | 2.2.1 | 排列工作包顺序 |  | 2d | 2019-06-28 A | 2019-07-01 |  | 31% | 1.38d | 42.5d | start no earlier than 2019-06-28 | 李佳伟 [50%] | 8h | 2.5h | 720 | 390 | ¥400.00 | ¥400.00 |
| 17 | 2.2.2 | 估算资源 | milestone | 0d | 2019-06-28 A | 2019-06-28 A |  | 100% |  |  | start no earlier than 2019-06-28 | 李佳伟 [10%] |  |  | 48 | 48 | ¥800.00 | ¥800.00 |
| 18 | 2.2.3 | 估算持续时间 | manual | 1d | 2019-06-28 A | 2019-06-28 |  | 63% | 0.38d |  |  | 李佳伟 [10%] | 0.8h | 0.5h | 96 | 78 | ¥800.00 | ¥800.00 |
| 19 | 2.2.4 | 制定进度计划 | milestone, manual | 0d | 2019-06-29 A | 2019-06-29 A |  | 100% |  |  |  | 李佳伟 [10%] |  |  | 48 | 48 | ¥400.00 | ¥400.00 |
| 20 | 2.3 | **规划成本** |  | 0d | 2019-07-01 | 2019-07-01 |  |  |  | 0d |  |  |  |  | 96 | 96 | ¥2,400.00 | ¥2,400.00 |
| 21 | 2.3.1 | 项目成本估算 | milestone | 0d | 2019-07-01 | 2019-07-01 |  |  |  | 0d | start no earlier than 2019-07-01 | 李佳伟 [10%] |  |  | 48 | 48 | ¥1,200.00 |  |
| 22 | 2.3.2 | 项目预算 | milestone | 0d | 2019-07-01 | 2019-07-01 |  |  |  | 0d | start no earlier than 2019-07-01 | 李佳伟 [10%] |  |  | 48 | 48 | ¥1,200.00 |  |
| 23 | 2.4 | **规划质量** |  | 2d | 2019-07-02 | 2019-07-03 |  |  |  | 40.5d |  |  | 16h |  | 1,200 |  | ¥2,560.00 | ¥2,560.00 |
| 24 | 2.4.1 | 制定测试计划 |  | 2d | 2019-07-02 | 2019-07-03 |  |  |  | 40.5d | start no earlier than 2019-07-02 | 王庭恩 [50%] | 8h |  | 600 |  | ¥640.00 | ¥640.00 |
| 25 | 2.4.2 | 制定测试用例 |  | 2d | 2019-07-02 | 2019-07-03 |  |  |  | 40.5d | start no earlier than 2019-07-02 | 王庭恩 [50%] | 8h |  | 600 |  | ¥1,920.00 | ¥1,920.00 |

| ID | WBS | Task | Duration | Start | Finish | Predecessors | Total slack | Free slack | Constraint | Resources | Work | Cost | 总成本 | 剩余 |
| --- | --- | --- | --- | --- | --- | --- | --- | --- | --- | --- | --- | --- | --- | --- |
| 26 | 2.5 | **规划人力资源** | 1d | 2019-07-03 | 2019-07-03 |  | 40.5d |  |  |  | 4.8h | 576 | ¥1,600.00 | ¥1,600.00 |
| 27 | 2.5.1 | 制定人力资源计划 | 1d | 2019-07-03 | 2019-07-03 |  | 40.5d |  | start no earlier than 2019-07-03 | 李佳伟 [30%] | 2.4h | 288 | ¥800.00 | ¥800.00 |
| 28 | 2.5.2 | 制定人员配备管理计 | 1d | 2019-07-03 | 2019-07-03 |  | 40.5d |  | start no earlier than 2019-07-03 | 李佳伟 [30%] | 2.4h | 288 | ¥800.00 | ¥800.00 |
| 29 | 2.6 | **规划沟通** | 1d | 2019-07-04 | 2019-07-04 |  | 39.5d |  |  |  | 1.6h | 176 | ¥800.00 | ¥800.00 |
| 30 | 2.6.1 | 制定沟通管理计划 | 1d | 2019-07-04 | 2019-07-04 |  | 39.5d |  | start no earlier than 2019-07-04 | 李佳伟 [10%]; 熊毅 [10%] | 1.6h | 176 | ¥800.00 | ¥800.00 |
| 31 | 2.7 | **规划采购** | 1d | 2019-07-05 | 2019-07-05 |  | 38.5d |  |  |  | 10.4h | 1,088 | ¥2,800.00 | ¥2,800.00 |
| 32 | 2.7.1 | 自制外购分析 | 1d | 2019-07-05 | 2019-07-05 |  | 38.5d |  | start no earlier than 2019-07-05 | 李晔欣 | 8h | 800 | ¥800.00 | ¥800.00 |
| 33 | 2.7.2 | 制定采购文件 | 1d | 2019-07-05 | 2019-07-05 |  | 38.5d |  | start no earlier than 2019-07-05 | 李佳伟 [30%] | 2.4h | 288 | ¥2,000.00 | ¥2,000.00 |
| 34 | 2.8 | **规划风险** | 14d | 2019-07-08 | 2019-07-25 |  | 24.5d |  |  |  | 392h | 22,640 | ¥1,200.00 | ¥1,200.00 |
| 35 | 2.8.1 | 识别风险 | 12d | 2019-07-08 | 2019-07-23 |  | 26.5d |  | start no earlier than 2019-07-08 | 李佳伟 [50%]; 李晔欣 [50%]; 王庭恩 [50%]; 熊毅 [50%] | 192h | 10,920 | ¥400.00 | ¥400.00 |
| 36 | 2.8.2 | 风险分析 | 12d | 2019-07-09 | 2019-07-24 |  | 24.5d | 0d | start no earlier than 2019-07-09 | 李佳伟 [50%]; 李晔欣 [50%]; 王庭恩 [50%]; 熊毅 [50%] | 192h | 10,920 | ¥400.00 | ¥400.00 |
| 37 | 2.8.3 | 制定风险登记册 | 1d | 2019-07-25 | 2019-07-25 | 36 | 24.5d |  |  | 熊毅 | 8h | 800 | ¥400.00 | ¥400.00 |
| 38 | 2.9 | 规划整合 | 1d | 2019-07-26 | 2019-07-26 |  | 23.5d |  | start no earlier than 2019-07-26 | 李佳伟; 李晔欣; 王庭恩; 熊毅 | 32h | 3,360 | ¥400.00 | ¥400.00 |
| 39 | 3 | **执行与监控** | 20.25d? | 2019-07-29 | 2019-08-26 |  | 1d |  |  |  | 254.48h | 25,193.6 | ¥45,770.00 | ¥45,770.00 |
| 40 | 3.1 | 组建项目团队 | 1d | 2019-07-29 | 2019-07-29 |  | 22.5d |  | start no earlier than 2019-07-29 | 李佳伟 | 8h | 960 | ¥5,160.00 | ¥5,160.00 |
| 41 | 3.2 | **项目执行** | 12d? | 2019-07-30 | 2019-08-14 |  | 10.5d |  |  |  | 134.4h | 12,160 | ¥10,040.00 | ¥10,040.00 |
| 42 | 3.2.1 | **用户模块** | 5d | 2019-07-30 | 2019-08-05 |  | 17.5d |  |  |  | 46.4h | 3,840 | ¥5,040.00 | ¥5,040.00 |
| 43 | 3.2.1.1 | 注册登录 | 2d | 2019-07-30 | 2019-07-31 |  | 18.5d | 0d | start no earlier than 2019-07-30 | 李晔欣 [20%] | 3.2h | 240 | ¥840.00 | ¥840.00 |
| 44 | 3.2.1.2 | 首页 | 2d | 2019-07-30 | 2019-07-31 |  | 17.5d | 0d | start no earlier than 2019-07-30 | 李晔欣 [20%] | 3.2h | 240 | ¥840.00 | ¥840.00 |
| 45 | 3.2.1.3 | 浏览景点 | 2d | 2019-08-01 | 2019-08-02 | 43 | 18.5d |  |  | 王庭恩 | 16h | 1,200 | ¥560.00 | ¥560.00 |
| 46 | 3.2.1.4 | 搜索宾馆 | 2d | 2019-08-01 | 2019-08-02 | 44 | 17.5d | 0d |  | 熊毅 | 16h | 1,200 | ¥560.00 | ¥560.00 |
| 47 | 3.2.1.5 | 个人配置 | 1d | 2019-08-05 | 2019-08-05 | 46 | 17.5d |  |  | 李佳伟 | 8h | 960 | ¥840.00 |  |
| 48 | 3.2.2 | **商家模块** | 4d | 2019-08-06 | 2019-08-09 |  | 13.5d |  |  |  | 48h | 4,560 | ¥3,080.00 | ¥3,080.00 |
| 49 | 3.2.2.1 | 注册 | 2d | 2019-08-06 | 2019-08-07 |  | 15.5d |  | start no earlier than 2019-08-06 | 王庭恩 | 16h | 1,200 | ¥560.00 | ¥560.00 |
| 50 | 3.2.2.2 | 房间管理 | 1d | 2019-08-06 | 2019-08-06 |  | 13.5d | 0d | start no earlier than 2019-08-06 | 李晔欣 | 8h | 800 | ¥840.00 | ¥840.00 |
| 51 | 3.2.2.3 | 订单处理 | 1d | 2019-08-07 | 2019-08-07 | 50 | 13.5d | 0d |  | 李晔欣 | 8h | 800 | ¥560.00 | ¥560.00 |
| 52 | 3.2.2.4 | 统计 | 1d | 2019-08-08 | 2019-08-08 | 51 | 13.5d | 0d |  | 熊毅 | 8h | 800 | ¥560.00 | ¥560.00 |
| 53 | 3.2.2.5 | 商家配置 | 1d | 2019-08-09 | 2019-08-09 | 52 | 13.5d |  |  | 李佳伟 | 8h | 960 | ¥560.00 | ¥560.00 |

| ID | WBS | Task | Type | Duration | Start | Finish | Predecessors | Total slack | Free slack | Constraint | Resources | Work | Cost | 总成本 | 剩余 |
| --- | --- | --- | --- | --- | --- | --- | --- | --- | --- | --- | --- | --- | --- | --- | --- |
| 54 | 3.2.3 | **管理员模块** |  | 3d? | 2019-08-12 | 2019-08-14 |  | 10.5d |  |  |  | 40h | 3,760 | ¥1,920.00 | ¥1,920.00 |
| 55 | 3.2.3.1 | 商家审核 |  | 2d | 2019-08-12 | 2019-08-13 |  | 10.5d | 0d | start no earlier than 2019-08-12 | 李晔欣 | 16h | 1,200 | ¥480.00 | ¥480.00 |
| 56 | 3.2.3.2 | 管理商家与用户 |  | 1d? | 2019-08-12 | 2019-08-12 |  | 11.5d | 0d | start no earlier than 2019-08-12 | 李佳伟 | 8h | 960 | ¥720.00 | ¥720.00 |
| 57 | 3.2.3.3 | 统计分析 |  | 1d | 2019-08-13 | 2019-08-13 | 56 | 11.5d |  |  | 王庭恩 | 8h | 800 | ¥240.00 | ¥240.00 |
| 58 | 3.2.3.4 | 备份 |  | 1d | 2019-08-14 | 2019-08-14 | 55 | 10.5d |  |  | 熊毅 | 8h | 800 | ¥480.00 | ¥480.00 |
| 59 | 3.3 | **项目监控** |  | 1d | 2019-07-30 | 2019-07-30 |  | 0d |  |  |  | 16h | 1,760 | ¥7,210.00 | ¥7,210.00 |
| 60 | 3.3.1 | 各项指标监控 |  | 1d | 2019-07-30 | 2019-07-30 |  | 21.5d |  | finish no earlier than 2019-07-30 | 李佳伟 | 8h | 960 | ¥1,130.00 | ¥1,130.00 |
| 61 | 3.3.2 | 监控评审 |  | 1d | 2019-07-30 | 2019-07-30 |  | 21.5d |  | finish no earlier than 2019-07-30 | 熊毅 [50%] | 4h | 400 | ¥1,480.00 | ¥1,480.00 |
| 62 | 3.3.3 | 变更评审 |  | 1d | 2019-07-30 | 2019-07-30 |  | 21.5d |  | finish no earlier than 2019-07-30 | 李晔欣 [50%] | 4h | 400 | ¥1,480.00 | ¥1,480.00 |
| 63 | 3.3.4 | 例会 | milestone | 0d | 2019-07-30 | 2019-07-30 |  | 0d |  | start no earlier than 2019-07-30 | 李佳伟; 李晔欣; 王庭恩; 熊毅 |  |  | ¥3,120.00 | ¥3,120.00 |
| 64 | 3.4 | **管理干系人** |  | 1d | 2019-08-16 | 2019-08-16 |  | 8.5d |  |  |  | 8.08h | 809.6 | ¥1,200.00 | ¥1,200.00 |
| 65 | 3.4.1 | 发布项目信息 |  | 1d | 2019-08-16 | 2019-08-16 |  | 8.5d |  | start no earlier than 2019-08-16 | 李佳伟 [1%] | 0.08h | 9.6 | ¥400.00 | ¥400.00 |
| 66 | 3.4.2 | 报告监控指标 |  | 1d | 2019-08-16 | 2019-08-16 |  | 8.5d |  | start no earlier than 2019-08-16 | 熊毅 [50%] | 4h | 400 | ¥400.00 | ¥400.00 |
| 67 | 3.4.3 | 干系人沟通 |  | 1d | 2019-08-16 | 2019-08-16 |  | 8.5d |  | start no earlier than 2019-08-16 | 李晔欣 [50%] | 4h | 400 | ¥400.00 | ¥400.00 |
| 68 | 3.5 | **团队建设** |  | 3d | 2019-08-19 | 2019-08-21 |  | 5.5d |  |  |  | 72h | 7,680 | ¥12,360.00 | ¥12,360.00 |
| 69 | 3.5.1 | 培训 |  | 1d | 2019-08-19 | 2019-08-19 |  | 5.5d | 0d | start no earlier than 2019-08-17 | 李佳伟 | 8h | 960 | ¥5,120.00 | ¥5,120.00 |
| 70 | 3.5.2 | 娱乐活动 |  | 1d | 2019-08-20 | 2019-08-20 | 69 | 5.5d | 0d |  | 李佳伟; 李晔欣; 王庭恩; 熊毅 | 32h | 3,360 | ¥4,120.00 | ¥4,120.00 |
| 71 | 3.5.3 | 沟通 |  | 1d | 2019-08-21 | 2019-08-21 | 70 | 5.5d |  |  | 李佳伟; 李晔欣; 王庭恩; 熊毅 | 32h | 3,360 | ¥3,120.00 | ¥3,120.00 |
| 72 | 3.6 | 采购 |  | 1d | 2019-08-22 | 2019-08-22 |  | 3.25d | 0d | start no earlier than 2019-08-22 | 李佳伟 | 8h | 960 | ¥8,000.00 | ¥8,000.00 |
| 73 | 3.7 | 项目验收 |  | 1.25d | 2019-08-23 | 2019-08-26 | 72 | 3.25d |  |  | 李佳伟 [80%] | 8h | 864 | ¥1,800.00 | ¥1,800.00 |
| 74 | 4 | **收尾** |  | 3.5d | 2019-08-26 | 2019-08-29 |  | 0d |  |  |  | 96h | 9,408 | ¥5,320.00 | ¥5,320.00 |
| 75 | 4.1 | 项目终验 |  | 1.25d | 2019-08-26 | 2019-08-27 |  | 0d |  | start no earlier than 2019-08-26 | 李佳伟 [80%]; 李晔欣 [80%]; 王庭恩 [80%]; 熊毅 [80%] | 32h | 3,024 | ¥1,800.00 | ¥1,800.00 |
| 76 | 4.2 | 结束采购 |  | 1.25d | 2019-08-27 | 2019-08-28 | 75 | 0d |  |  | 李佳伟 [80%]; 李晔欣 [80%]; 王庭恩 [80%]; 熊毅 [80%] | 32h | 3,024 | ¥400.00 | ¥400.00 |
| 77 | 4.3 | 项目内部收尾 |  | 1d | 2019-08-28 | 2019-08-29 | 76 | 0d |  |  | 李佳伟; 李晔欣; 王庭恩; 熊毅 | 32h | 3,360 |  | ¥3,120.00 |
